# 3-成本规划-程璐

Schedule from MS Project, 2020-03-03 to 2020-07-16, status date 2020-03-27, costs in ¥.
Microsoft

## Calendars

- 标准: Mon-Fri 08:00-12:00, 13:00-17:00; Sat-Sun off. Exceptions (off unless hours are given): 2020-04-11 to 2020-04-12 08:00-12:00, 13:00-17:00.

## Resources

| Resource | Group | Rate | Notes |
| --- | --- | --- | --- |
| 程璐 | 项目经理 | 40 | 项目经理 |
| 许莹心 | 测试专家 | 40 | 测试专家 |
| 谢卿卉 | 产品经理 | 40 | 产品经理 |
| 刘莉娅 | 技术专家 | 40 | 技术专家 |
| 皇甫玉茹 | UE/UI 设计师 | 40 | UE/UI 设计师 |
| 杨小云 | UE/UI 设计师 | 40 | UE/UI 设计师 |
| 张梦如 | 技术专家 | 40 | 技术专家 |
| 开发设备 |  | 2000 |  |
| 测试设备 |  | 2000 |  |
| 团队建设费 |  |  |  |
| 企业水电费 |  |  |  |
| 管理费 |  |  |  |
| 储备资金 |  | 5000 |  |
| 服务器 |  | 1000 |  |
| 间接成本 |  |  |  |
| 间接 |  |  |  |
| 间接资金500元 |  |  |  |
| 间接成本500 |  |  |  |
| 储备资金300元 |  |  |  |
| 间接成本500元 |  |  |  |
| 间接成本800元 |  |  |  |
| 储备资金500元 |  |  |  |

## Schedule

| ID | WBS | Task | Type | Duration | Start | Finish | Predecessors | Constraint | Resources | Work | Cost |
| --- | --- | --- | --- | --- | --- | --- | --- | --- | --- | --- | --- |
| 1 | 1 | **启动** |  | 7.5d | 2020-03-03 | 2020-03-12 |  |  | 储备资金300元; 间接成本500元 | 208h | 3,520 |
| 2 | 1.1 | 组建核心团队 | manual | 0.5d | 2020-03-03 | 2020-03-03 |  | start no earlier than 2020-03-03 | 程璐; 皇甫玉茹; 刘莉娅; 谢卿卉; 许莹心; 杨小云; 张梦如 | 28h | 1,120 |
| 3 | 1.2 | 干系人分析 | manual | 2d | 2020-03-06 | 2020-03-10 |  | start no earlier than 2020-03-06 | 杨小云 | 16h | 640 |
| 4 | 1.3 | 里程碑计划 | manual | 1d | 2020-03-09 | 2020-03-10 |  |  | 程璐 | 8h | 320 |
| 5 | 1.4 | 制定项目章程 | manual | 1d | 2020-03-10 | 2020-03-11 | 2, 3, 4 |  | 程璐 | 8h | 320 |
| 6 | 1.5 | 项目启动大会 | manual | 0.5d | 2020-03-12 | 2020-03-12 | 5 |  | 程璐; 皇甫玉茹; 刘莉娅; 谢卿卉; 许莹心; 杨小云; 张梦如 | 28h | 1,120 |
| 7 | 2 | **规划** |  | 29d | 2020-03-13 | 2020-04-21 |  |  | 间接成本800元; 储备资金500元 | 312h | 12,480 |
| 8 | 2.1 | **规划范围** |  | 8.5d | 2020-03-13 | 2020-03-25 |  |  |  | 104h | 4,160 |
| 9 | 2.1.1 | 制定需求说明书 | manual | 1d | 2020-03-13 | 2020-03-16 | 6 |  | 许莹心 | 8h | 320 |
| 10 | 2.1.2 | 界面设计 | manual | 4d | 2020-03-16 | 2020-03-20 | 9 |  | 皇甫玉茹 | 32h | 1,280 |
| 11 | 2.1.3 | 详细设计说明书 | manual | 3d | 2020-03-16 | 2020-03-19 | 9 |  | 刘莉娅 | 24h | 960 |
| 12 | 2.1.4 | 范围说明书 | manual | 2d | 2020-03-17 | 2020-03-19 | 9 |  | 谢卿卉 | 16h | 640 |
| 13 | 2.1.5 | 创建WBS | manual | 1d | 2020-03-20 | 2020-03-23 | 10, 11, 12 |  | 杨小云 | 8h | 320 |
| 14 | 2.1.6 | 形成范围基准 | manual | 2d | 2020-03-23 | 2020-03-25 | 13 |  | 程璐 | 16h | 640 |
| 15 | 2.2 | **规划时间** |  | 9d | 2020-03-25 | 2020-04-07 |  |  |  | 48h | 1,920 |
| 16 | 2.2.1 | 排列工作包顺序 | manual | 1d | 2020-03-25 | 2020-03-26 | 14 |  | 张梦如 | 8h | 320 |
| 17 | 2.2.2 | 估算资源 | manual | 1d | 2020-03-27 | 2020-03-30 | 16 |  | 杨小云 | 8h | 320 |
| 18 | 2.2.3 | 估算持续时间 | manual | 1d | 2020-03-31 | 2020-04-01 | 17 |  | 谢卿卉 | 8h | 320 |
| 19 | 2.2.4 | 制定进度计划 | manual | 1d | 2020-04-02 | 2020-04-03 | 18 |  | 皇甫玉茹 | 8h | 320 |
| 20 | 2.2.5 | 形成进度基准 | manual | 2d | 2020-04-03 | 2020-04-06 | 19 |  | 程璐 | 16h | 640 |
| 21 | 2.3 | **规划成本** |  | 4d | 2020-04-07 | 2020-04-11 |  |  |  | 24h | 960 |
| 22 | 2.3.1 | 项目成本估算 | manual | 1d | 2020-04-07 | 2020-04-08 | 20 |  | 谢卿卉 | 8h | 320 |
| 23 | 2.3.2 | 项目预算 | manual | 1d | 2020-04-09 | 2020-04-10 | 22 |  | 张梦如 | 8h | 320 |
| 24 | 2.3.3 | 形成范围基准 | manual | 1d | 2020-04-10 | 2020-04-11 | 23 |  | 程璐 | 8h | 320 |

| ID | WBS | Task | Type | Duration | Start | Finish | Predecessors | Constraint | Resources | Work | Cost |
| --- | --- | --- | --- | --- | --- | --- | --- | --- | --- | --- | --- |
| 25 | 2.4 | **规划质量** |  | 7d | 2020-03-30 | 2020-04-08 |  |  |  | 32h | 1,280 |
| 26 | 2.4.1 | 制定测试计划 | manual | 2d | 2020-03-30 | 2020-04-01 | 14 |  | 许莹心 | 16h | 640 |
| 27 | 2.4.2 | 制定测试用例 | manual | 2d | 2020-04-06 | 2020-04-08 | 26 |  | 许莹心 | 16h | 640 |
| 28 | 2.5 | **规划人力资源** |  | 4d | 2020-04-01 | 2020-04-07 |  |  |  | 16h | 640 |
| 29 | 2.5.1 | 制定人力资源计划 | manual | 1d | 2020-04-01 | 2020-04-02 | 17 |  | 程璐 | 8h | 320 |
| 30 | 2.5.2 | 制定人员配备管理计划 | manual | 1d | 2020-04-06 | 2020-04-07 | 29 |  | 刘莉娅 | 8h | 320 |
| 31 | 2.6 | **规划沟通** |  | 2d | 2020-04-08 | 2020-04-10 |  |  |  | 16h | 640 |
| 32 | 2.6.1 | 制定沟通管理计划 | manual | 2d | 2020-04-08 | 2020-04-10 | 30 |  | 杨小云 | 16h | 640 |
| 33 | 2.7 | **规划采购** |  | 4d | 2020-04-01 | 2020-04-07 |  |  |  | 24h | 960 |
| 34 | 2.7.1 | 自制外购分析 | manual | 2d | 2020-04-01 | 2020-04-03 | 17 |  | 刘莉娅 | 16h | 640 |
| 35 | 2.7.2 | 制定采购文件 | manual | 1d | 2020-04-06 | 2020-04-07 | 34 |  | 张梦如 | 8h | 320 |
| 36 | 2.8 | **规划风险** |  | 6d | 2020-04-11 | 2020-04-16 |  |  |  | 48h | 1,920 |
| 37 | 2.8.1 | 识别风险 | manual | 2d | 2020-04-11 | 2020-04-13 | 15, 21, 25, 28, 31, 33 |  | 皇甫玉茹 | 16h | 640 |
| 38 | 2.8.2 | 风险分析 | manual | 2d | 2020-04-13 | 2020-04-14 | 37 | start no earlier than 2020-04-13 | 程璐 | 16h | 640 |
| 39 | 2.8.3 | 制定风险登记册 | manual | 2d | 2020-04-15 | 2020-04-16 | 38 | start no earlier than 2020-04-15 | 谢卿卉 | 16h | 640 |
| 40 | 2.9 | 规划整合 | manual | 2d | 2020-04-17 | 2020-04-20 | 39 |  |  |  |  |
| 41 | 3 | **执行与监控** |  | 44d | 2020-04-22 | 2020-06-22 |  |  | 储备资金; 服务器; 管理费 [0.1%]; 开发设备; 企业水电费 [0.1%] | 876h | 49,040 |
| 42 | 3.1 | 组建项目团队 | manual | 0.5d | 2020-04-22 | 2020-04-22 | 7 |  | 程璐; 皇甫玉茹; 刘莉娅; 谢卿卉; 许莹心; 杨小云; 张梦如 | 28h | 1,120 |
| 43 | 3.2 | **项目执行** |  | 38.5d | 2020-04-23 | 2020-06-16 |  |  |  | 368h | 18,720 |
| 44 | 3.2.1 | **用户模块** |  | 12.5d | 2020-04-23 | 2020-05-11 |  |  |  | 232h | 9,280 |
| 45 | 3.2.1.1 | 注册登录 | manual | 2d | 2020-04-23 | 2020-04-24 | 42 |  | 皇甫玉茹 | 16h | 640 |
| 46 | 3.2.1.2 | 首页 | manual | 3d | 2020-04-28 | 2020-04-30 | 45 |  | 谢卿卉 | 24h | 960 |
| 47 | 3.2.1.3 | 浏览商品 | manual | 2d | 2020-05-01 | 2020-05-04 | 46 |  | 程璐 | 16h | 640 |
| 48 | 3.2.1.4 | 搜索商品 | manual | 2d | 2020-05-05 | 2020-05-07 | 46 |  | 许莹心 | 16h | 640 |
| 49 | 3.2.1.5 | 认证 | manual | 1d | 2020-05-01 | 2020-05-01 | 46 |  | 许莹心 | 8h | 320 |
| 50 | 3.2.1.6 | 订单管理 | manual | 2d | 2020-05-07 | 2020-05-11 | 54 |  | 刘莉娅 | 16h | 640 |
| 51 | 3.2.1.7 | 聊天 | manual | 4d | 2020-05-01 | 2020-05-06 | 46 |  | 张梦如 | 32h | 1,280 |
| 52 | 3.2.1.8 | 个人配置 | manual | 2d | 2020-05-01 | 2020-05-04 | 46 |  | 杨小云 | 16h | 640 |

| ID | WBS | Task | Type | Duration | Start | Finish | Predecessors | Constraint | Resources | Work | Cost |
| --- | --- | --- | --- | --- | --- | --- | --- | --- | --- | --- | --- |
| 53 | 3.2.1.9 | **买家模块** |  | 4d | 2020-05-05 | 2020-05-08 |  |  |  | 72h | 2,880 |
| 54 | 3.2.1.9.1 | 购物车 | manual | 2d | 2020-05-05 | 2020-05-06 | 47 |  | 刘莉娅 | 16h | 640 |
| 55 | 3.2.1.9.2 | 钓鱼 | manual | 3d | 2020-05-05 | 2020-05-07 | 47 |  | 谢卿卉 | 24h | 960 |
| 56 | 3.2.1.9.3 | 收藏 | manual | 2d | 2020-05-05 | 2020-05-06 | 47 |  | 杨小云 | 16h | 640 |
| 57 | 3.2.1.9.4 | 下单 | manual | 2d | 2020-05-07 | 2020-05-08 | 54 |  | 程璐 | 16h | 640 |
| 58 | 3.2.1.10 | **卖家模块** |  | 2d | 2020-05-01 | 2020-05-04 |  |  |  | 16h | 640 |
| 59 | 3.2.1.10.1 | 商品发布 | manual | 2d | 2020-05-01 | 2020-05-04 | 46 |  | 皇甫玉茹 | 16h | 640 |
| 60 | 3.2.2 | 单元测试 | manual | 3d | 2020-05-19 | 2020-05-21 | 44 |  | 许莹心; 测试设备 | 24h | 2,960 |
| 61 | 3.2.3 | **管理模块** |  | 5d | 2020-05-20 | 2020-05-27 |  |  |  | 88h | 3,520 |
| 62 | 3.2.3.1 | 商品推送 | manual | 3d | 2020-05-20 | 2020-05-25 | 42 |  | 谢卿卉 | 24h | 960 |
| 63 | 3.2.3.2 | 广告管理 | manual | 2d | 2020-05-20 | 2020-05-22 | 42 |  | 张梦如 | 16h | 640 |
| 64 | 3.2.3.3 | 用户审核 | manual | 1d | 2020-05-20 | 2020-05-21 | 42 |  | 杨小云 | 8h | 320 |
| 65 | 3.2.3.4 | 统计分析 | manual | 3d | 2020-05-20 | 2020-05-25 | 59 |  | 皇甫玉茹 | 24h | 960 |
| 66 | 3.2.3.5 | 备份 | manual | 2d | 2020-05-25 | 2020-05-27 | 65 |  | 皇甫玉茹 | 16h | 640 |
| 67 | 3.2.4 | 单元测试 | manual | 3d | 2020-06-11 | 2020-06-16 | 61 | start no earlier than 2020-06-11 | 许莹心; 测试设备 | 24h | 2,960 |
| 68 | 3.3 | **项目监控** |  | 18.5d | 2020-04-23 | 2020-05-19 |  |  |  | 120h | 4,800 |
| 69 | 3.3.1 | 各项指标监控 | manual | 2d | 2020-04-23 | 2020-04-24 | 42 |  | 程璐; 许莹心 | 32h | 1,280 |
| 70 | 3.3.2 | 监控评审 | manual | 1d | 2020-04-27 | 2020-04-27 | 69 |  | 程璐; 皇甫玉茹 | 16h | 640 |
| 71 | 3.3.3 | 变更评审 | manual | 1d | 2020-04-29 | 2020-04-29 | 70 |  | 程璐; 杨小云 | 16h | 640 |
| 72 | 3.3.4 | 例会 | manual | 1d | 2020-05-18 | 2020-05-18 | 42 |  | 程璐; 皇甫玉茹; 刘莉娅; 谢卿卉; 许莹心; 杨小云; 张梦如 | 56h | 2,240 |
| 73 | 3.4 | **管理干系人** |  | 6d | 2020-04-23 | 2020-05-01 |  |  |  | 24h | 960 |
| 74 | 3.4.1 | 发布项目信息 | manual | 1d | 2020-04-27 | 2020-04-28 | 42 |  | 程璐 | 8h | 320 |
| 75 | 3.4.2 | 报告监控指标 | manual | 1d | 2020-04-30 | 2020-05-01 | 42 |  | 程璐 | 8h | 320 |
| 76 | 3.4.3 | 干系人沟通 | manual | 1d | 2020-04-23 | 2020-04-24 | 42 |  | 程璐 | 8h | 320 |

| ID | WBS | Task | Type | Duration | Start | Finish | Predecessors | Resources | Work | Cost |
| --- | --- | --- | --- | --- | --- | --- | --- | --- | --- | --- |
| 77 | 3.5 | **团队建设** |  | 4.5d | 2020-04-23 | 2020-04-29 |  | 团队建设费 [0.1%] | 280h | 11,200 |
| 78 | 3.5.1 | 培训 | manual | 2d | 2020-04-23 | 2020-04-24 | 42 | 程璐; 皇甫玉茹; 刘莉娅; 谢卿卉; 许莹心; 杨小云; 张梦如 | 112h | 4,480 |
| 79 | 3.5.2 | 娱乐活动 | manual | 1d | 2020-04-23 | 2020-04-23 | 42 | 程璐; 皇甫玉茹; 刘莉娅; 谢卿卉; 许莹心; 杨小云; 张梦如 | 56h | 2,240 |
| 80 | 3.5.3 | 沟通 | manual | 2d | 2020-04-27 | 2020-04-29 | 42 | 程璐; 皇甫玉茹; 刘莉娅; 谢卿卉; 许莹心; 杨小云; 张梦如 | 112h | 4,480 |
| 81 | 3.6 | 采购 | manual | 2d | 2020-04-23 | 2020-04-24 | 42 | 程璐 | 16h | 640 |
| 82 | 3.7 | 项目验收 | manual | 1d | 2020-06-22 | 2020-06-22 | 43 | 程璐; 皇甫玉茹; 刘莉娅; 谢卿卉; 许莹心; 测试设备 | 40h | 3,600 |
| 83 | 4 | **收尾** |  | 11d | 2020-07-01 | 2020-07-16 |  | 测试设备; 服务器; 企业水电费 [0.1%] | 400h | 19,000 |
| 84 | 4.1 | 项目终验 | manual | 3d | 2020-07-01 | 2020-07-06 | 82 | 程璐; 皇甫玉茹; 刘莉娅; 谢卿卉; 许莹心; 杨小云; 张梦如 | 168h | 6,720 |
| 85 | 4.2 | 结束采购 | manual | 1d | 2020-07-01 | 2020-07-02 | 82 | 程璐 | 8h | 320 |
| 86 | 4.3 | 项目内部收尾 | manual | 4d | 2020-07-11 | 2020-07-15 | 82 | 程璐; 皇甫玉茹; 刘莉娅; 谢卿卉; 许莹心; 杨小云; 张梦如 | 224h | 8,960 |
